# Group10WBS

Schedule from MS Project, 2016-10-06 to 2016-11-29, status date 2016-11-07, A marks actual dates.

## Calendars

- Standard: Mon-Fri 08:00-12:00, 13:00-17:00; Sat-Sun off.

## Resources

| Resource |
| --- |
| Tyler |
| All |
| Jann |
| Jeff |
| Kati |
| Software |
| Simulation |
| Workbench |

## Schedule

| ID | WBS | Task | Type | Duration | Start | Finish | Predecessors | Complete | Remaining | Total slack | Free slack | Resources | Work | Actual work | Resources |
| --- | --- | --- | --- | --- | --- | --- | --- | --- | --- | --- | --- | --- | --- | --- | --- |
| 2 | 1 | Project Proposal |  | 5d | 2016-10-06 A | 2016-10-12 A |  | 100% |  |  |  | Jann; Jeff; Kati; Tyler; Software; Simulation; Workbench | 280h | 280h |  |
| 3 | 2 | Requirements Document |  | 5d | 2016-10-13 A | 2016-10-19 A | 2 | 100% |  |  |  | Jann; Jeff; Kati; Tyler | 160h | 160h |  |
| 4 | 3 | **Circuit Design** |  | 14d | 2016-10-20 A | 2016-11-08 |  | 93% | 0.93d | 1d |  |  | 540h | 524h |  |
| 5 | 3.1 | **Coil characterizaion** |  | 5d | 2016-10-20 A | 2016-10-26 A |  | 100% |  |  |  | Jeff; Tyler; Jann; Kati; All; Simulation; Software; Workbench | 400h | 400h |  |
| 6 | 3.1.1 | Resonance |  | 1d | 2016-10-20 A | 2016-10-20 A | 3 | 100% |  |  |  | Jeff; Jann | 16h | 16h | SPICE, Spectrum Analyer |
| 7 | 3.1.2 | IV characteristics |  | 2d | 2016-10-21 A | 2016-10-24 A | 6 | 100% |  |  |  | Tyler; Jann | 32h | 32h | SPICE |
| 8 | 3.1.3 | Harmonics |  | 1d | 2016-10-25 A | 2016-10-25 A | 7 | 100% |  |  |  | Jann; Kati | 16h | 16h | Spectrum Analyer |
| 9 | 3.1.4 | Fine Tune |  | 1d | 2016-10-26 A | 2016-10-26 A | 8 | 100% |  |  |  | Jann; Jeff | 16h | 16h |  |
| 10 | 3.2 | **Driver circuitry** |  | 1d | 2016-10-27 A | 2016-10-27 A |  | 100% |  |  |  | All | 24h | 24h |  |
| 11 | 3.2.1 | Current draw |  | 0.5d | 2016-10-27 A | 2016-10-27 A | 9 | 100% |  |  |  | Jeff | 4h | 4h | SPICE |
| 12 | 3.2.2 | Load Characterization |  | 0.5d | 2016-10-27 A | 2016-10-27 A | 11 | 100% |  |  |  | Jeff; Jann | 8h | 8h | SPICE |
| 13 | 3.2.3 | Regulator |  | 0.5d | 2016-10-27 A | 2016-10-27 A | 11 | 100% |  |  |  | Tyler | 4h | 4h | SPICE |
| 14 | 3.3 | Rectification |  | 1d | 2016-10-27 A | 2016-10-28 A | 11 | 100% |  |  |  | Jeff | 8h | 8h | SPICE |
| 15 | 3.4 | LED layout |  | 0.5d | 2016-10-28 A | 2016-10-28 A | 14 | 100% |  |  |  | Kati | 4h | 4h | SPICE |
| 16 | 3.5 | Order Parts |  | 3d | 2016-10-31 A | 2016-11-02 A | 15 | 100% |  |  |  | Jeff; Tyler | 48h | 48h |  |
| 17 | 3.6 | Driver live Test |  | 1d | 2016-11-03 A | 2016-11-03 A | 16 | 100% |  |  |  | Jann | 8h | 8h | Test Equipment |
| 18 | 3.7 | Driver Debug |  | 2d | 2016-11-04 A | 2016-11-07 A | 17 | 100% |  |  |  | Jeff; Jann | 32h | 32h | Test Equipment |
| 19 | 3.8 | Driver/Coil integration |  | 1d | 2016-11-08 | 2016-11-08 | 18 |  |  | 1d | 0d | Tyler; Jann | 16h |  | Test Equipment |
| 20 | 3.9 | Design Phase Complete | milestone | 0d | 2016-11-08 | 2016-11-08 | 19 |  |  | 1d | 0d | All |  |  |  |
| 21 | 4 | **Board Layout** |  | 12d | 2016-10-27 A | 2016-11-11 |  | 25% | 9d | 7d | 0d |  | 32h | 8h |  |
| 22 | 4.1 | EagleCad Tx Layout |  | 2d | 2016-11-09 | 2016-11-10 | 19 |  |  | 7d | 0d | Tyler | 16h |  | EagleCAD |
| 23 | 4.2 | EagleCad Rx Layout |  | 1d | 2016-11-11 | 2016-11-11 | 22 |  |  | 7d |  | Tyler | 8h |  | EagleCAD |
| 24 | 4.3 | Breakout Board Layout |  | 1d | 2016-10-27 A | 2016-10-27 A | 5 | 100% |  |  |  | Tyler | 8h | 8h | EagleCAD |
| 25 | 5 | **Micro-Controller Programming** |  | 20d | 2016-10-21 A | 2016-11-17 |  | 22% | 15.56d | 7.5d |  |  | 72h | 16h |  |
| 26 | 5.1 | PWM control |  | 2d | 2016-10-21 A | 2016-10-24 A | 6 | 100% |  |  |  | Kati | 16h | 16h | DragonAVR |
| 27 | 5.2 | Reed Sensor Integration |  | 3d | 2016-11-14 | 2016-11-16 | 21 |  |  | 8.5d |  | Tyler | 24h |  | DragonAVR |
| 28 | 5.3 | LED interface |  | 1d | 2016-11-14 | 2016-11-14 | 21 |  |  | 7d | 0d | All | 8h |  | DragonAVR |
| 29 | 5.4 | Analog current read |  | 3d | 2016-11-15 | 2016-11-17 | 20, 28 |  |  | 7d | 0d | All | 24h |  | DragonAVR |
| 30 | 6 | Module Integration |  | 0.5d | 2016-11-18 | 2016-11-18 | 29, 24 |  |  | 7d |  | All | 4h |  |  |

| ID | WBS | Task | Type | Duration | Start | Finish | Predecessors | Total slack | Free slack | Resources | Work | Resources |
| --- | --- | --- | --- | --- | --- | --- | --- | --- | --- | --- | --- | --- |
| 31 | 7 | **Circuit Test** |  | 3.5d | 2016-11-09 | 2016-11-14 |  | 1d |  |  |  |  |
| 32 | 7.1 | Breadboard Test |  | 1d | 2016-11-09 | 2016-11-09 | 20 | 1d | 0d |  |  | Test Equipment |
| 33 | 7.2 | Board Pin down Test |  | 1d | 2016-11-10 | 2016-11-10 | 32 | 1d | 0d |  |  | Test Equipment |
| 34 | 7.3 | Fine Tune Elements |  | 1d | 2016-11-11 | 2016-11-11 | 33 | 1d | 0d |  |  | Test Equipment |
| 35 | 7.4 | Integration 2 |  | 0.5d | 2016-11-14 | 2016-11-14 | 34 | 1d | 0d |  |  |  |
| 36 | 8 | OshPark Board Order |  | 5d | 2016-11-14 | 2016-11-21 | 35 | 1d | 0d | Tyler | 40h |  |
| 37 | 9 | Prototype 1 |  | 2d | 2016-11-21 | 2016-11-23 | 36 | 1d | 0d | Jann; Jeff | 32h | Test Equipment,Solder |
| 38 | 10 | First Device Complete | milestone | 0d | 2016-11-23 | 2016-11-23 | 37 | 1d | 0d | All |  |  |
| 39 | 11 | Finish follow up devices |  | 3d | 2016-11-23 | 2016-11-28 | 38 | 1d |  | All | 24h |  |
| 40 | 12 | **Aesthetics** |  | 1d | 2016-11-23 | 2016-11-24 |  | 2.5d |  | Jann; Kati | 28h |  |
| 41 | 12.1 | Enclosure Design |  | 1d | 2016-11-23 | 2016-11-24 | 37 | 3d |  | Jeff | 8h | Fabrication |
| 42 | 12.2 | Electro-magnetic Warning |  | 0.5d | 2016-11-23 | 2016-11-23 | 37 | 2.5d |  | Jann | 4h | Fabrication |
| 43 | 13 | **Presentation** |  | 1d | 2016-11-28 | 2016-11-29 |  | 0d |  | All | 8h |  |
| 44 | 13.1 | Report/Post-Mortem | manual | 1d | 2016-11-28 | 2016-11-29 | 42 |  |  |  |  |  |
| 45 | 13.2 | Poster | manual | 1d | 2016-11-28 | 2016-11-29 | 42 |  |  |  |  |  |
| 46 | 13.3 | Demonstration | manual | 1d | 2016-11-28 | 2016-11-29 | 42 |  |  |  |  |  |
