# Group10WBS

Schedule from MS Project, 2016-10-06 to 2016-12-02.

## Calendars

- Standard: Mon-Fri 08:00-12:00, 13:00-17:00; Sat-Sun off.

## Resources

| Resource |
| --- |
| Tyler |
| All |
| Jann |
| Jeff |
| Kati |

## Schedule

| ID | WBS | Task | Type | Duration | Start | Finish | Predecessors | Total slack | Free slack | Resources | Work |
| --- | --- | --- | --- | --- | --- | --- | --- | --- | --- | --- | --- |
| 2 | 1 | Project Proposal |  | 5d | 2016-10-06 | 2016-10-12 |  | 0d |  | Jann; Jeff; Kati; Tyler | 160h |
| 3 | 2 | Requirements Document |  | 5d | 2016-10-13 | 2016-10-19 | 2 | 0d |  | Jann; Jeff; Kati; Tyler | 160h |
| 4 | 3 | **Circuit Design** |  | 14d | 2016-10-20 | 2016-11-08 |  | 0d |  |  | 300h |
| 5 | 3.1 | **Coil characterizaion** |  | 5d | 2016-10-20 | 2016-10-26 |  | 0d |  | Jeff; Tyler | 160h |
| 6 | 3.1.1 | Resonance |  | 1d | 2016-10-20 | 2016-10-20 | 3 | 0d |  | Jeff; Jann | 16h |
| 7 | 3.1.2 | IV characteristics |  | 2d | 2016-10-21 | 2016-10-24 | 6 | 0d |  | Tyler; Jann | 32h |
| 8 | 3.1.3 | Harmonics |  | 1d | 2016-10-25 | 2016-10-25 | 7 | 0d |  | Jann; Kati | 16h |
| 9 | 3.1.4 | Fine Tune |  | 1d | 2016-10-26 | 2016-10-26 | 8 | 0d |  | Jann; Jeff | 16h |
| 10 | 3.2 | **Driver circuitry** |  | 1d | 2016-10-27 | 2016-10-27 |  | 0d |  | All | 24h |
| 11 | 3.2.1 | Current draw |  | 0.5d | 2016-10-27 | 2016-10-27 | 9 | 0d |  | Jeff | 4h |
| 12 | 3.2.2 | Load Characterization |  | 0.5d | 2016-10-27 | 2016-10-27 | 11 | 26d |  | Jeff; Jann | 8h |
| 13 | 3.2.3 | Regulator |  | 0.5d | 2016-10-27 | 2016-10-27 | 11 | 26d |  | Tyler | 4h |
| 14 | 3.3 | Rectification |  | 1d | 2016-10-27 | 2016-10-28 | 11 | 0d |  | Jeff | 8h |
| 15 | 3.4 | LED layout |  | 0.5d | 2016-10-28 | 2016-10-28 | 14 | 0d |  | Kati | 4h |
| 16 | 3.5 | Order Parts |  | 3d | 2016-10-31 | 2016-11-02 | 15 | 0d |  | Jeff; Tyler | 48h |
| 17 | 3.6 | Driver live Test |  | 1d | 2016-11-03 | 2016-11-03 | 16 | 0d |  | Jann | 8h |
| 18 | 3.7 | Driver Debug |  | 2d | 2016-11-04 | 2016-11-07 | 17 | 0d |  | Jeff; Jann | 32h |
| 19 | 3.8 | Driver/Coil integration |  | 1d | 2016-11-08 | 2016-11-08 | 18 | 0d |  | Tyler; Jann | 16h |
| 20 | 3.9 | Design Phase Complete | milestone | 0d | 2016-11-08 | 2016-11-08 | 19 | 0d |  | All |  |
| 21 | 4 | **Board Layout** |  | 12d | 2016-10-27 | 2016-11-11 |  | 11d | 0d |  | 32h |
| 22 | 4.1 | EagleCad Tx Layout |  | 2d | 2016-11-09 | 2016-11-10 | 19 | 12d | 0d | Tyler | 16h |
| 23 | 4.2 | EagleCad Rx Layout |  | 1d | 2016-11-11 | 2016-11-11 | 22 | 12d |  | Tyler | 8h |
| 24 | 4.3 | Breakout Board Layout |  | 1d | 2016-10-27 | 2016-10-27 | 5 | 11d |  | Tyler | 8h |
| 25 | 5 | **Micro-Controller Programming** |  | 19d | 2016-10-21 | 2016-11-16 |  | 12d |  |  | 72h |
| 26 | 5.1 | PWM control |  | 2d | 2016-10-21 | 2016-10-24 | 6 | 29d |  | Kati | 16h |
| 27 | 5.2 | Reed Sensor Integration |  | 3d | 2016-11-14 | 2016-11-16 | 21 | 12d |  | Tyler | 24h |
| 28 | 5.3 | LED interface |  | 1d | 2016-11-14 | 2016-11-14 | 21 | 14d |  | All | 8h |
| 29 | 5.4 | Analog current read |  | 3d | 2016-11-09 | 2016-11-11 | 20 | 0d |  | All | 24h |
| 30 | 6 | Integration |  | 0.5d | 2016-11-14 | 2016-11-14 | 29, 24 | 0d |  | All | 4h |

| ID | WBS | Task | Type | Duration | Start | Finish | Predecessors | Total slack | Free slack | Resources | Work |
| --- | --- | --- | --- | --- | --- | --- | --- | --- | --- | --- | --- |
| 31 | 7 | **Circuit Test** |  | 3.5d | 2016-11-14 | 2016-11-17 |  | 0d |  |  |  |
| 32 | 7.1 | Breadboard Test |  | 1d | 2016-11-14 | 2016-11-15 | 30 | 0d |  |  |  |
| 33 | 7.2 | Board Pin down Test |  | 1d | 2016-11-15 | 2016-11-16 | 32 | 0d |  |  |  |
| 34 | 7.3 | Fine Tune Elements |  | 1d | 2016-11-16 | 2016-11-17 | 33 | 0d |  |  |  |
| 35 | 7.4 | Integration 2 |  | 0.5d | 2016-11-17 | 2016-11-17 | 34 | 0d |  |  |  |
| 36 | 8 | OshPark Board Order |  | 5d | 2016-11-18 | 2016-11-24 | 35 | 0d |  | Tyler | 40h |
| 37 | 9 | Prototype 1 |  | 2d | 2016-11-25 | 2016-11-28 | 36 | 0d |  | Jann; Jeff | 32h |
| 38 | 10 | First Device Complete | milestone | 0d | 2016-11-28 | 2016-11-28 | 37 | 1d | 0d | All |  |
| 39 | 11 | Fine tune complimentary devices |  | 3d | 2016-11-29 | 2016-12-01 | 38 | 1d |  | All | 24h |
| 40 | 12 | **Aesthetics** |  | 1d | 2016-11-29 | 2016-11-29 |  | 0d |  | Jann; Kati | 28h |
| 41 | 12.1 | Enclosure Design |  | 1d | 2016-11-29 | 2016-11-29 | 37 | 0d |  | Jeff | 8h |
| 42 | 12.2 | Electro-magnetic Warning |  | 0.5d | 2016-11-29 | 2016-11-29 | 37 | 0.5d |  | Jann | 4h |
| 43 | 13 | Presentation |  | 3d | 2016-11-30 | 2016-12-02 | 40 | 0d |  | All | 24h |
